How a schedule from an exported table changed from version to version. A marks actual dates.

## Version 1 (saved 2026-08-28)

Note of the change: data: add baseline schedule dataset

| ID | Task | Start |
| --- | --- | --- |
| PREL-010 | Notice to Proceed | 2026-09-01 |
| PREL-020 | Mobilization & Temporary Facilities | 2026-09-02 |
| PREL-030 | Survey / Setting Out | 2026-09-08 |
| DES-010 | Review IFC Drawings / Interfaces | 2026-09-02 |
| DES-020 | Method Statements & Material Submittals | 2026-09-14 |
| PROC-010 | Long-Lead M&E Procurement | 2026-11-05 |
| PROC-020 | SCADA / Instrumentation Procurement | 2026-11-05 |
| PROC-030 | Electrical / Receiving Equipment Procurement | 2026-11-05 |
| WTP-CIV-010 | Site Clearing / Excavation / Dewatering | 2026-09-25 |
| WTP-CIV-020 | Ground Preparation / Blinding | 2026-11-05 |
| WTP-CIV-030 | WTP Foundations / Base Slabs | 2026-11-23 |
| WTP-CIV-040 | Mixing / Flocculation Basin RC Works | 2027-02-01 |
| WTP-CIV-050 | Sedimentation Basin RC Works | 2027-02-24 |
| WTP-CIV-060 | Rapid Sand Filter Structure | 2027-06-21 |
| WTP-CIV-070 | Internal Channels / Pipe Galleries | 2027-09-22 |
| WTP-CIV-080 | Waterproofing / Protective Coating | 2027-11-13 |
| WTP-CIV-090 | Hydrostatic / Structural Water Test | 2027-12-18 |
| RES-010 | 10,000 m³ Reservoir Excavation | 2026-09-25 |
| RES-020 | Reservoir Foundation / Base Slab | 2026-11-11 |
| RES-030 | Reservoir Walls / Columns | 2027-01-20 |
| RES-040 | Reservoir Roof Slab | 2027-05-17 |
| RES-050 | Reservoir Waterproofing / Coating | 2027-07-26 |
| RES-060 | Reservoir Hydrostatic Test | 2027-08-30 |
| BLDG-010 | Pump Room Civil / Structural Works | 2026-12-16 |
| BLDG-020 | Chemical Building Civil / Architectural | 2026-12-28 |
| BLDG-030 | Administration & Laboratory Building | 2026-11-05 |
| BLDG-040 | Building MEP / Architectural Finishes | 2027-03-24 |
| ME-010 | Process Piping Installation | 2028-01-04 |
| ME-020 | Pumps & Mechanical Equipment Installation | 2027-10-21 |
| ME-030 | Chemical Dosing Equipment Installation | 2027-10-21 |
| ME-040 | Filter Media / Underdrain Equipment | 2028-01-04 |
| ME-050 | Electrical Installation / MCC / Cabling | 2027-08-13 |
| ME-060 | Instrumentation & SCADA Installation | 2028-04-29 |
| SAL-010 | Salakham Site Preparation / Excavation | 2026-09-25 |
| SAL-020 | 7,100 m³ Reservoir RC Works | 2026-11-11 |
| SAL-030 | Salakham Pump Room | 2026-10-30 |
| SAL-040 | Salakham M&E Installation | 2027-10-21 |
| PWR-010 | 22-kV Route Survey / Permits | 2026-09-25 |
| PWR-020 | Pole / Foundation Works | 2026-11-17 |
| PWR-030 | 22-kV Line Installation | 2027-03-13 |
| PWR-040 | Receiving Equipment / Energization | 2027-08-13 |
| COMM-010 | Mechanical Pre-Commissioning | 2028-04-29 |
| COMM-020 | Electrical / I&C Pre-Commissioning | 2028-08-12 |
| COMM-030 | Dry Commissioning | 2028-09-11 |
| COMM-040 | Wet Commissioning / Process Start-Up | 2028-10-04 |
| COMM-050 | Performance / Water Quality Testing | 2028-11-08 |
| COMM-060 | Punch List / Rectification | 2028-12-13 |
| COMM-070 | Training / O&M Documents | 2028-10-04 |
| COMM-080 | Taking Over / Completion Milestone | 2029-01-17 |

## Version 2 (saved 2026-08-29)

Note of the change: data: reconcile all baseline dates and slack to native Microsoft Project

Changed:

| ID | Task | Start |
| --- | --- | --- |
| PREL-020 | Mobilization & Temporary Facilities | 2026-09-02 → 2026-09-01 (-1d) |
| PREL-030 | Survey / Setting Out | 2026-09-08 → 2026-09-07 (-1d) |
| DES-010 | Review IFC Drawings / Interfaces | 2026-09-02 → 2026-09-01 (-1d) |
| DES-020 | Method Statements & Material Submittals | 2026-09-14 → 2026-09-12 (-2d) |
| PROC-010 | Long-Lead M&E Procurement | 2026-11-05 → 2026-11-04 (-1d) |
| PROC-020 | SCADA / Instrumentation Procurement | 2026-11-05 → 2026-11-04 (-1d) |
| PROC-030 | Electrical / Receiving Equipment Procurement | 2026-11-05 → 2026-11-04 (-1d) |
| WTP-CIV-010 | Site Clearing / Excavation / Dewatering | 2026-09-25 → 2026-09-24 (-1d) |
| WTP-CIV-020 | Ground Preparation / Blinding | 2026-11-05 → 2026-11-04 (-1d) |
| WTP-CIV-030 | WTP Foundations / Base Slabs | 2026-11-23 → 2026-11-21 (-2d) |
| WTP-CIV-040 | Mixing / Flocculation Basin RC Works | 2027-02-01 → 2027-01-30 (-2d) |
| WTP-CIV-050 | Sedimentation Basin RC Works | 2027-02-24 → 2027-02-23 (-1d) |
| WTP-CIV-060 | Rapid Sand Filter Structure | 2027-06-21 → 2027-06-19 (-2d) |
| WTP-CIV-070 | Internal Channels / Pipe Galleries | 2027-09-22 → 2027-09-21 (-1d) |
| WTP-CIV-080 | Waterproofing / Protective Coating | 2027-11-13 → 2027-11-12 (-1d) |
| WTP-CIV-090 | Hydrostatic / Structural Water Test | 2027-12-18 → 2027-12-17 (-1d) |
| RES-010 | 10,000 m³ Reservoir Excavation | 2026-09-25 → 2026-09-24 (-1d) |
| RES-020 | Reservoir Foundation / Base Slab | 2026-11-11 → 2026-11-10 (-1d) |
| RES-030 | Reservoir Walls / Columns | 2027-01-20 → 2027-01-19 (-1d) |
| RES-040 | Reservoir Roof Slab | 2027-05-17 → 2027-05-15 (-2d) |
| RES-050 | Reservoir Waterproofing / Coating | 2027-07-26 → 2027-07-24 (-2d) |
| RES-060 | Reservoir Hydrostatic Test | 2027-08-30 → 2027-08-28 (-2d) |
| BLDG-010 | Pump Room Civil / Structural Works | 2026-12-16 → 2026-12-15 (-1d) |
| BLDG-020 | Chemical Building Civil / Architectural | 2026-12-28 → 2026-12-26 (-2d) |
| BLDG-030 | Administration & Laboratory Building | 2026-11-05 → 2026-11-04 (-1d) |
| ME-010 | Process Piping Installation | 2028-01-04 → 2028-01-03 (-1d) |
| ME-020 | Pumps & Mechanical Equipment Installation | 2027-10-21 → 2027-10-20 (-1d) |
| ME-030 | Chemical Dosing Equipment Installation | 2027-10-21 → 2027-10-20 (-1d) |
| ME-040 | Filter Media / Underdrain Equipment | 2028-01-04 → 2028-01-03 (-1d) |
| ME-050 | Electrical Installation / MCC / Cabling | 2027-08-13 → 2027-08-11 (-2d) |
| ME-060 | Instrumentation & SCADA Installation | 2028-04-29 → 2028-04-28 (-1d) |
| SAL-010 | Salakham Site Preparation / Excavation | 2026-09-25 → 2026-09-24 (-1d) |
| SAL-020 | 7,100 m³ Reservoir RC Works | 2026-11-11 → 2026-11-10 (-1d) |
| SAL-030 | Salakham Pump Room | 2026-10-30 → 2026-10-29 (-1d) |
| SAL-040 | Salakham M&E Installation | 2027-10-21 → 2027-10-20 (-1d) |
| PWR-010 | 22-kV Route Survey / Permits | 2026-09-25 → 2026-09-24 (-1d) |
| PWR-020 | Pole / Foundation Works | 2026-11-17 → 2026-11-16 (-1d) |
| PWR-030 | 22-kV Line Installation | 2027-03-13 → 2027-03-12 (-1d) |
| PWR-040 | Receiving Equipment / Energization | 2027-08-13 → 2027-08-11 (-2d) |
| COMM-010 | Mechanical Pre-Commissioning | 2028-04-29 → 2028-04-28 (-1d) |
| COMM-020 | Electrical / I&C Pre-Commissioning | 2028-08-12 → 2028-08-11 (-1d) |
| COMM-030 | Dry Commissioning | 2028-09-11 → 2028-09-09 (-2d) |
| COMM-040 | Wet Commissioning / Process Start-Up | 2028-10-04 → 2028-10-03 (-1d) |
| COMM-050 | Performance / Water Quality Testing | 2028-11-08 → 2028-11-07 (-1d) |
| COMM-060 | Punch List / Rectification | 2028-12-13 → 2028-12-12 (-1d) |
| COMM-070 | Training / O&M Documents | 2028-10-04 → 2028-10-03 (-1d) |
| COMM-080 | Taking Over / Completion Milestone | 2029-01-17 → 2029-01-15 (-2d) |

## Version 3 (saved 2026-08-29)

Note of the change: deliverables: synchronize native Project controls evidence

Changed:

| ID | Task | Other |
| --- | --- | --- |
| RES-010 | 10,000 mÂ³ Reservoir Excavation | was named 10,000 m³ Reservoir Excavation |
| SAL-020 | 7,100 mÂ³ Reservoir RC Works | was named 7,100 m³ Reservoir RC Works |

## Version 4 (saved 2026-08-29)

Note of the change: schedule: close final logic path and reconcile submission source

Changed:

| ID | Task | Other |
| --- | --- | --- |
| RES-010 | 10,000 m³ Reservoir Excavation | was named 10,000 mÂ³ Reservoir Excavation |
| SAL-020 | 7,100 m³ Reservoir RC Works | was named 7,100 mÂ³ Reservoir RC Works |

## Version 5 (saved 2026-08-30)

Note of the change: deliverables: publish lean Baseline Actual Recovery MPP set

Changed:

| ID | Task | Start | Other |
| --- | --- | --- | --- |
| PREL-010 | Notice to Proceed | 2026-09-01 → 2025-10-01 (-335d) |  |
| PREL-020 | Mobilization & Temporary Facilities | 2026-09-01 → 2025-10-01 (-335d) |  |
| PREL-030 | Survey / Setting Out | 2026-09-07 → 2025-10-07 (-335d) |  |
| DES-010 | Review IFC Drawings / Interfaces | 2026-09-01 → 2025-10-01 (-335d) |  |
| DES-020 | Method Statements & Material Submittals | 2026-09-12 → 2025-10-13 (-334d) |  |
| PROC-010 | Long-Lead M&E Procurement | 2026-11-04 → 2025-12-04 (-335d) |  |
| PROC-020 | SCADA / Instrumentation Procurement | 2026-11-04 → 2025-12-04 (-335d) |  |
| PROC-030 | Electrical / Receiving Equipment Procurement | 2026-11-04 → 2025-12-04 (-335d) |  |
| WTP-CIV-010 | Site Clearing / Excavation / Dewatering | 2026-09-24 → 2025-10-24 (-335d) |  |
| WTP-CIV-020 | Ground Preparation / Blinding | 2026-11-04 → 2025-12-04 (-335d) |  |
| WTP-CIV-030 | WTP Foundations / Base Slabs | 2026-11-21 → 2025-12-22 (-334d) |  |
| WTP-CIV-040 | Mixing / Flocculation Basin RC Works | 2027-01-30 → 2026-03-02 (-334d) |  |
| WTP-CIV-050 | Sedimentation Basin RC Works | 2027-02-23 → 2026-03-25 (-335d) |  |
| WTP-CIV-060 | Rapid Sand Filter Structure | 2027-06-19 → 2026-07-20 (-334d) |  |
| WTP-CIV-070 | Internal Channels / Pipe Galleries | 2027-09-21 → 2026-10-21 (-335d) |  |
| WTP-CIV-080 | Waterproofing / Protective Coating | 2027-11-12 → 2026-12-12 (-335d) |  |
| WTP-CIV-090 | Hydrostatic / Structural Water Test | 2027-12-17 → 2027-01-16 (-335d) |  |
| RES-010 | 10,000 mÂ³ Reservoir Excavation | 2026-09-24 → 2025-10-24 (-335d) | was named 10,000 m³ Reservoir Excavation |
| RES-020 | Reservoir Foundation / Base Slab | 2026-11-10 → 2025-12-10 (-335d) |  |
| RES-030 | Reservoir Walls / Columns | 2027-01-19 → 2026-02-18 (-335d) |  |
| RES-040 | Reservoir Roof Slab | 2027-05-15 → 2026-06-15 (-334d) |  |
| RES-050 | Reservoir Waterproofing / Coating | 2027-07-24 → 2026-08-24 (-334d) |  |
| RES-060 | Reservoir Hydrostatic Test | 2027-08-28 → 2026-09-28 (-334d) |  |
| BLDG-010 | Pump Room Civil / Structural Works | 2026-12-15 → 2026-01-14 (-335d) |  |
| BLDG-020 | Chemical Building Civil / Architectural | 2026-12-26 → 2026-01-26 (-334d) |  |
| BLDG-030 | Administration & Laboratory Building | 2026-11-04 → 2025-12-04 (-335d) |  |
| BLDG-040 | Building MEP / Architectural Finishes | 2027-03-24 → 2026-04-23 (-335d) |  |
| ME-010 | Process Piping Installation | 2028-01-03 → 2027-02-02 (-335d) |  |
| ME-020 | Pumps & Mechanical Equipment Installation | 2027-10-20 → 2026-11-19 (-335d) |  |
| ME-030 | Chemical Dosing Equipment Installation | 2027-10-20 → 2026-11-19 (-335d) |  |
| ME-040 | Filter Media / Underdrain Equipment | 2028-01-03 → 2027-02-02 (-335d) |  |
| ME-050 | Electrical Installation / MCC / Cabling | 2027-08-11 → 2026-09-10 (-335d) |  |
| ME-060 | Instrumentation & SCADA Installation | 2028-04-28 → 2027-05-29 (-335d) |  |
| SAL-010 | Salakham Site Preparation / Excavation | 2026-09-24 → 2025-10-24 (-335d) |  |
| SAL-020 | 7,100 mÂ³ Reservoir RC Works | 2026-11-10 → 2025-12-10 (-335d) | was named 7,100 m³ Reservoir RC Works |
| SAL-030 | Salakham Pump Room | 2026-10-29 → 2025-11-28 (-335d) |  |
| SAL-040 | Salakham M&E Installation | 2027-10-20 → 2026-11-19 (-335d) |  |
| PWR-010 | 22-kV Route Survey / Permits | 2026-09-24 → 2025-10-24 (-335d) |  |
| PWR-020 | Pole / Foundation Works | 2026-11-16 → 2025-12-16 (-335d) |  |
| PWR-030 | 22-kV Line Installation | 2027-03-12 → 2026-04-11 (-335d) |  |
| PWR-040 | Receiving Equipment / Energization | 2027-08-11 → 2026-09-10 (-335d) |  |
| COMM-010 | Mechanical Pre-Commissioning | 2028-04-28 → 2027-05-29 (-335d) |  |
| COMM-020 | Electrical / I&C Pre-Commissioning | 2028-08-11 → 2027-09-11 (-335d) |  |
| COMM-030 | Dry Commissioning | 2028-09-09 → 2027-10-11 (-334d) |  |
| COMM-040 | Wet Commissioning / Process Start-Up | 2028-10-03 → 2027-11-03 (-335d) |  |
| COMM-050 | Performance / Water Quality Testing | 2028-11-07 → 2027-12-08 (-335d) |  |
| COMM-060 | Punch List / Rectification | 2028-12-12 → 2028-01-12 (-335d) |  |
| COMM-070 | Training / O&M Documents | 2028-10-03 → 2027-11-03 (-335d) |  |
| COMM-080 | Taking Over / Completion Milestone | 2029-01-15 → 2028-02-15 (-335d) |  |
