# Michael_Futol_Chinaimo_Scenario_A_Critical_Delay

How a schedule from MS Project changed from version to version. A marks actual dates.

## Version 1 (data date 2027-08-31, saved 2026-08-29, file Michael_Futol_Chinaimo_Scenario_A_Critical_Delay.mpp)

Note of the change: deliverables: publish final illustrative MS Project assessment files

| ID | Task | Duration | Start | Finish | Predecessors | Total float |
| --- | --- | --- | --- | --- | --- | --- |
| 1 | Notice to Proceed | 0d? | 2026-09-01 | 2026-09-01 |  | 0d |
| 2 | Mobilization & Temporary Facilities | 20d? | 2026-09-01 | 2026-09-23 | 1 | 0d |
| 3 | Survey / Setting Out | 15d? | 2026-09-07 | 2026-09-23 | 2SS+5d | 0d |
| 4 | Review IFC Drawings / Interfaces | 30d? | 2026-09-01 | 2026-10-05 | 1 | 74d |
| 5 | Method Statements & Material Submittals | 45d? | 2026-09-12 | 2026-11-03 | 4SS+10d | 74d |
| 6 | Long-Lead M&E Procurement | 300d? | 2026-11-04 | 2027-10-19 | 5 | 74d |
| 7 | SCADA / Instrumentation Procurement | 260d? | 2026-11-04 | 2027-09-02 | 5 | 214d |
| 8 | Electrical / Receiving Equipment Procurement | 240d? | 2026-11-04 | 2027-08-10 | 5 | 134d |
| 9 | Site Clearing / Excavation / Dewatering | 35d? | 2026-09-24 | 2026-11-03 | 3 | 0d |
| 10 | Ground Preparation / Blinding | 15d? | 2026-11-04 | 2026-11-20 | 9 | 0d |
| 11 | WTP Foundations / Base Slabs | 60d? | 2026-11-21 | 2027-01-29 | 10 | 0d |
| 12 | Mixing / Flocculation Basin RC Works | 70d? | 2027-01-30 | 2027-04-21 | 11 | 0d |
| 13 | Sedimentation Basin RC Works | 100d? | 2027-02-23 | 2027-06-18 | 12SS+20d | 0d |
| 14 | Rapid Sand Filter Structure | 90d? | 2027-06-19 | 2027-10-01 | 13 | 0d |
| 15 | Internal Channels / Pipe Galleries | 45d? | 2027-10-02 | 2027-11-23 | 14 | 0d |
| 16 | Waterproofing / Protective Coating | 30d? | 2027-11-24 | 2027-12-28 | 15 | 0d |
| 17 | Hydrostatic / Structural Water Test | 14d? | 2027-12-29 | 2028-01-13 | 16 | 0d |
| 18 | 10,000 m³ Reservoir Excavation | 40d? | 2026-09-24 | 2026-11-09 | 3 | 340d |
| 19 | Reservoir Foundation / Base Slab | 60d? | 2026-11-10 | 2027-01-18 | 18 | 340d |
| 20 | Reservoir Walls / Columns | 100d? | 2027-01-19 | 2027-05-14 | 19 | 340d |
| 21 | Reservoir Roof Slab | 60d? | 2027-05-15 | 2027-07-23 | 20 | 340d |
| 22 | Reservoir Waterproofing / Coating | 30d? | 2027-07-24 | 2027-08-27 | 21 | 340d |
| 23 | Reservoir Hydrostatic Test | 14d? | 2027-08-28 | 2027-09-13 | 22 | 340d |
| 24 | Pump Room Civil / Structural Works | 75d? | 2026-12-15 | 2027-03-11 | 11SS+20d | 264d |
| 25 | Chemical Building Civil / Architectural | 90d? | 2026-12-26 | 2027-04-09 | 11SS+30d | 359d |
| 26 | Administration & Laboratory Building | 120d? | 2026-11-04 | 2027-03-23 | 9 | 509d |
| 27 | Building MEP / Architectural Finishes | 70d? | 2027-03-24 | 2027-06-12 | 26 | 509d |
| 28 | Process Piping Installation | 100d? | 2028-01-14 | 2028-05-09 | 17, 6 | 0d |
| 29 | Pumps & Mechanical Equipment Installation | 90d? | 2027-10-20 | 2028-02-01 | 24, 6 | 174d |
| 30 | Chemical Dosing Equipment Installation | 70d? | 2027-10-20 | 2028-01-08 | 25, 6 | 194d |
| 31 | Filter Media / Underdrain Equipment | 50d? | 2028-01-14 | 2028-03-11 | 17, 6 | 140d |
| 32 | Electrical Installation / MCC / Cabling | 100d? | 2027-08-11 | 2027-12-04 | 24, 8 | 134d |
| 33 | Instrumentation & SCADA Installation | 90d? | 2028-05-10 | 2028-08-22 | 28, 32, 7 | 0d |
| 34 | Salakham Site Preparation / Excavation | 40d? | 2026-09-24 | 2026-11-09 | 3 | 344d |
| 35 | 7,100 m³ Reservoir RC Works | 180d? | 2026-11-10 | 2027-06-07 | 34 | 344d |
| 36 | Salakham Pump Room | 90d? | 2026-10-29 | 2027-02-10 | 34SS+30d | 444d |
| 37 | Salakham M&E Installation | 80d? | 2027-10-20 | 2028-01-20 | 35, 36, 6 | 229d |
| 38 | 22-kV Route Survey / Permits | 45d? | 2026-09-24 | 2026-11-14 | 2 | 304d |
| 39 | Pole / Foundation Works | 100d? | 2026-11-16 | 2027-03-11 | 38 | 304d |
| 40 | 22-kV Line Installation | 120d? | 2027-03-12 | 2027-07-29 | 39 | 304d |
| 41 | Receiving Equipment / Energization | 30d? | 2027-08-11 | 2027-09-14 | 40, 8 | 294d |
| 42 | Mechanical Pre-Commissioning | 25d? | 2028-05-10 | 2028-06-07 | 28, 29, 30, 31 | 90d |
| 43 | Electrical / I&C Pre-Commissioning | 25d? | 2028-08-23 | 2028-09-20 | 33, 41 | 0d |
| 44 | Dry Commissioning | 20d? | 2028-09-21 | 2028-10-13 | 42, 43 | 0d |
| 45 | Wet Commissioning / Process Start-Up | 30d? | 2028-10-14 | 2028-11-17 | 44, 23, 37 | 0d |
| 46 | Performance / Water Quality Testing | 30d? | 2028-11-18 | 2028-12-22 | 45 | 0d |
| 47 | Punch List / Rectification | 30d? | 2028-12-23 | 2029-01-26 | 46 | 0d |
| 48 | Training / O&M Documents | 20d? | 2028-10-14 | 2028-11-06 | 45SS | 70d |
| 49 | Taking Over / Completion Milestone | 0d? | 2029-01-26 | 2029-01-26 | 47, 48 | 0d |

## Version 2 (data date 2027-08-31, saved 2026-08-29, file Michael_Futol_Chinaimo_Updated_Delay.mpp)

Note of the change: deliverables: publish final illustrative MS Project assessment files

Last finish stays 2029-01-26.

Changed:

| ID | Task | Start | Finish | Duration | Total float |
| --- | --- | --- | --- | --- | --- |
| 26 | Administration & Laboratory Building |  | 2027-03-23 → 2027-04-09 (+17d) | 120d? → 135d? | 509d → 494d |
| 27 | Building MEP / Architectural Finishes | 2027-03-24 → 2027-04-10 (+17d) | 2027-06-12 → 2027-06-30 (+18d) |  | 509d → 494d |

## Version 3 (data date 2027-08-31, saved 2026-08-29, file Michael_Futol_Chinaimo_Baseline.mpp)

Note of the change: deliverables: publish final illustrative MS Project assessment files

Last finish 2029-01-26 → 2029-01-15 (-11d).

Changed:

| ID | Task | Start | Finish | Duration | Total float |
| --- | --- | --- | --- | --- | --- |
| 14 | Rapid Sand Filter Structure |  | 2027-10-01 → 2027-09-20 (-11d) | 90d? → 80d? |  |
| 15 | Internal Channels / Pipe Galleries | 2027-10-02 → 2027-09-21 (-11d) | 2027-11-23 → 2027-11-11 (-12d) |  |  |
| 16 | Waterproofing / Protective Coating | 2027-11-24 → 2027-11-12 (-12d) | 2027-12-28 → 2027-12-16 (-12d) |  |  |
| 17 | Hydrostatic / Structural Water Test | 2027-12-29 → 2027-12-17 (-12d) | 2028-01-13 → 2028-01-01 (-12d) |  |  |
| 26 | Administration & Laboratory Building |  | 2027-04-09 → 2027-03-23 (-17d) | 135d? → 120d? | 494d → 499d |
| 27 | Building MEP / Architectural Finishes | 2027-04-10 → 2027-03-24 (-17d) | 2027-06-30 → 2027-06-12 (-18d) |  | 494d → 499d |
| 28 | Process Piping Installation | 2028-01-14 → 2028-01-03 (-11d) | 2028-05-09 → 2028-04-27 (-12d) |  |  |
| 31 | Filter Media / Underdrain Equipment | 2028-01-14 → 2028-01-03 (-11d) | 2028-03-11 → 2028-02-29 (-11d) |  |  |
| 33 | Instrumentation & SCADA Installation | 2028-05-10 → 2028-04-28 (-12d) | 2028-08-22 → 2028-08-10 (-12d) |  |  |
| 42 | Mechanical Pre-Commissioning | 2028-05-10 → 2028-04-28 (-12d) | 2028-06-07 → 2028-05-26 (-12d) |  |  |
| 43 | Electrical / I&C Pre-Commissioning | 2028-08-23 → 2028-08-11 (-12d) | 2028-09-20 → 2028-09-08 (-12d) |  |  |
| 44 | Dry Commissioning | 2028-09-21 → 2028-09-09 (-12d) | 2028-10-13 → 2028-10-02 (-11d) |  |  |
| 45 | Wet Commissioning / Process Start-Up | 2028-10-14 → 2028-10-03 (-11d) | 2028-11-17 → 2028-11-06 (-11d) |  |  |
| 46 | Performance / Water Quality Testing | 2028-11-18 → 2028-11-07 (-11d) | 2028-12-22 → 2028-12-11 (-11d) |  |  |
| 47 | Punch List / Rectification | 2028-12-23 → 2028-12-12 (-11d) | 2029-01-26 → 2029-01-15 (-11d) |  |  |
| 48 | Training / O&M Documents | 2028-10-14 → 2028-10-03 (-11d) | 2028-11-06 → 2028-10-25 (-12d) |  |  |
| 49 | Taking Over / Completion Milestone | 2029-01-26 → 2029-01-15 (-11d) | 2029-01-26 → 2029-01-15 (-11d) |  |  |

## Version 4 (data date 2027-08-31, saved 2026-08-29, file Michael_Futol_Chinaimo_Scenario_B_NonCritical_Delay.mpp)

Note of the change: deliverables: publish final illustrative MS Project assessment files

Last finish stays 2029-01-15.

Changed:

| ID | Task | Start | Finish | Duration | Total float |
| --- | --- | --- | --- | --- | --- |
| 26 | Administration & Laboratory Building |  | 2027-03-23 → 2027-04-09 (+17d) | 120d? → 135d? | 499d → 484d |
| 27 | Building MEP / Architectural Finishes | 2027-03-24 → 2027-04-10 (+17d) | 2027-06-12 → 2027-06-30 (+18d) |  | 499d → 484d |

## Version 5 (data date 2027-08-31, saved 2026-08-29, file Michael_Futol_Chinaimo_Scenario_D_Procurement_Watch.mpp)

Note of the change: deliverables: synchronize native Project controls evidence

Last finish stays 2029-01-15.

Changed:

| ID | Task | Start | Finish | Duration | Total float |
| --- | --- | --- | --- | --- | --- |
| 8 | Electrical / Receiving Equipment Procurement |  | 2027-08-10 → 2027-08-21 (+11d) | 240d? → 250d? | 124d → 114d |
| 26 | Administration & Laboratory Building |  | 2027-04-09 → 2027-03-23 (-17d) | 135d? → 120d? | 484d → 499d |
| 27 | Building MEP / Architectural Finishes | 2027-04-10 → 2027-03-24 (-17d) | 2027-06-30 → 2027-06-12 (-18d) |  | 484d → 499d |
| 32 | Electrical Installation / MCC / Cabling | 2027-08-11 → 2027-08-23 (+12d) | 2027-12-04 → 2027-12-16 (+12d) |  | 124d → 114d |
| 41 | Receiving Equipment / Energization | 2027-08-11 → 2027-08-23 (+12d) | 2027-09-14 → 2027-09-25 (+11d) |  | 284d → 274d |

## Version 6 (data date 2027-08-31, saved 2026-08-30, file Michael_Futol_Chinaimo_Scenario_C_Concurrent_Delays.mpp)

Note of the change: deliverables: synchronized native Project package with recovery programme

Last finish 2029-01-15 → 2029-01-26 (+11d).

Changed:

| ID | Task | Start | Finish | Duration | Total float | Predecessors |
| --- | --- | --- | --- | --- | --- | --- |
| 1 | Notice to Proceed |  |  | 0d? → 0d |  |  |
| 2 | Mobilization & Temporary Facilities |  |  | 20d? → 20d |  |  |
| 3 | Survey / Setting Out |  |  | 15d? → 15d |  |  |
| 4 | Review IFC Drawings / Interfaces |  |  | 30d? → 30d | 64d → 74d |  |
| 5 | Method Statements & Material Submittals |  |  | 45d? → 45d | 64d → 74d |  |
| 6 | Long-Lead M&E Procurement |  |  | 300d? → 300d | 64d → 74d |  |
| 7 | SCADA / Instrumentation Procurement |  |  | 260d? → 260d | 204d → 214d |  |
| 8 | Electrical / Receiving Equipment Procurement |  | 2027-08-21 → 2027-08-10 (-11d) | 250d? → 240d | 114d → 134d |  |
| 9 | Site Clearing / Excavation / Dewatering |  |  | 35d? → 35d |  |  |
| 10 | Ground Preparation / Blinding |  |  | 15d? → 15d |  |  |
| 11 | WTP Foundations / Base Slabs |  |  | 60d? → 60d |  |  |
| 12 | Mixing / Flocculation Basin RC Works |  |  | 70d? → 70d |  |  |
| 13 | Sedimentation Basin RC Works |  |  | 100d? → 100d |  |  |
| 14 | Rapid Sand Filter Structure |  | 2027-09-20 → 2027-10-01 (+11d) | 80d? → 90d |  |  |
| 15 | Internal Channels / Pipe Galleries | 2027-09-21 → 2027-10-02 (+11d) | 2027-11-11 → 2027-11-23 (+12d) | 45d? → 45d |  |  |
| 16 | Waterproofing / Protective Coating | 2027-11-12 → 2027-11-24 (+12d) | 2027-12-16 → 2027-12-28 (+12d) | 30d? → 30d |  |  |
| 17 | Hydrostatic / Structural Water Test | 2027-12-17 → 2027-12-29 (+12d) | 2028-01-01 → 2028-01-13 (+12d) | 14d? → 14d |  |  |
| 18 | 10,000 m³ Reservoir Excavation |  |  | 40d? → 40d | 330d → 340d |  |
| 19 | Reservoir Foundation / Base Slab |  |  | 60d? → 60d | 330d → 340d |  |
| 20 | Reservoir Walls / Columns |  |  | 100d? → 100d | 330d → 340d |  |
| 21 | Reservoir Roof Slab |  |  | 60d? → 60d | 330d → 340d |  |
| 22 | Reservoir Waterproofing / Coating |  |  | 30d? → 30d | 330d → 340d |  |
| 23 | Reservoir Hydrostatic Test |  |  | 14d? → 14d | 330d → 340d |  |
| 24 | Pump Room Civil / Structural Works |  |  | 75d? → 75d | 254d → 264d |  |
| 25 | Chemical Building Civil / Architectural |  |  | 90d? → 90d | 349d → 359d |  |
| 26 | Administration & Laboratory Building |  | 2027-03-23 → 2027-04-09 (+17d) | 120d? → 135d | 499d → 494d |  |
| 27 | Building MEP / Architectural Finishes | 2027-03-24 → 2027-04-10 (+17d) | 2027-06-12 → 2027-06-30 (+18d) | 70d? → 70d | 499d → 494d |  |
| 28 | Process Piping Installation | 2028-01-03 → 2028-01-14 (+11d) | 2028-04-27 → 2028-05-09 (+12d) | 100d? → 100d |  |  |
| 29 | Pumps & Mechanical Equipment Installation |  |  | 90d? → 90d | 164d → 174d |  |
| 30 | Chemical Dosing Equipment Installation |  |  | 70d? → 70d | 184d → 194d |  |
| 31 | Filter Media / Underdrain Equipment | 2028-01-03 → 2028-01-14 (+11d) | 2028-02-29 → 2028-03-11 (+11d) | 50d? → 50d |  |  |
| 32 | Electrical Installation / MCC / Cabling | 2027-08-23 → 2027-08-11 (-12d) | 2027-12-16 → 2027-12-04 (-12d) | 100d? → 100d | 114d → 134d |  |
| 33 | Instrumentation & SCADA Installation | 2028-04-28 → 2028-05-10 (+12d) | 2028-08-10 → 2028-08-22 (+12d) | 90d? → 90d |  |  |
| 34 | Salakham Site Preparation / Excavation |  |  | 40d? → 40d | 334d → 344d |  |
| 35 | 7,100 m³ Reservoir RC Works |  |  | 180d? → 180d | 334d → 344d |  |
| 36 | Salakham Pump Room |  |  | 90d? → 90d | 434d → 444d |  |
| 37 | Salakham M&E Installation |  |  | 80d? → 80d | 219d → 229d |  |
| 38 | 22-kV Route Survey / Permits |  |  | 45d? → 45d | 294d → 304d |  |
| 39 | Pole / Foundation Works |  |  | 100d? → 100d | 294d → 304d |  |
| 40 | 22-kV Line Installation |  |  | 120d? → 120d | 294d → 304d |  |
| 41 | Receiving Equipment / Energization | 2027-08-23 → 2027-08-11 (-12d) | 2027-09-25 → 2027-09-14 (-11d) | 30d? → 30d | 274d → 294d |  |
| 42 | Mechanical Pre-Commissioning | 2028-04-28 → 2028-05-10 (+12d) | 2028-05-26 → 2028-06-07 (+12d) | 25d? → 25d |  |  |
| 43 | Electrical / I&C Pre-Commissioning | 2028-08-11 → 2028-08-23 (+12d) | 2028-09-08 → 2028-09-20 (+12d) | 25d? → 25d |  |  |
| 44 | Dry Commissioning | 2028-09-09 → 2028-09-21 (+12d) | 2028-10-02 → 2028-10-13 (+11d) | 20d? → 20d |  |  |
| 45 | Wet Commissioning / Process Start-Up | 2028-10-03 → 2028-10-14 (+11d) | 2028-11-06 → 2028-11-17 (+11d) | 30d? → 30d |  |  |
| 46 | Performance / Water Quality Testing | 2028-11-07 → 2028-11-18 (+11d) | 2028-12-11 → 2028-12-22 (+11d) | 30d? → 30d |  |  |
| 47 | Punch List / Rectification | 2028-12-12 → 2028-12-23 (+11d) | 2029-01-15 → 2029-01-26 (+11d) | 30d? → 30d |  |  |
| 48 | Training / O&M Documents | 2028-10-03 → 2028-10-14 (+11d) | 2028-10-25 → 2028-11-06 (+12d) | 20d? → 20d |  |  |
| 49 | Taking Over / Completion Milestone | 2029-01-15 → 2029-01-26 (+11d) | 2029-01-15 → 2029-01-26 (+11d) | 0d? → 0d |  | 47, 48 → 47, 48, 27 |

## Version 7 (data date 2027-08-31, saved 2026-08-30, file Michael_Futol_Chinaimo_Scenario_D_Procurement_Watch.mpp)

Note of the change: deliverables: synchronized native Project package with recovery programme

Last finish 2029-01-26 → 2029-01-15 (-11d).

Changed:

| ID | Task | Start | Finish | Duration | Total float |
| --- | --- | --- | --- | --- | --- |
| 8 | Electrical / Receiving Equipment Procurement |  | 2027-08-10 → 2027-08-21 (+11d) | 240d → 250d | 134d → 114d |
| 14 | Rapid Sand Filter Structure |  | 2027-10-01 → 2027-09-20 (-11d) | 90d → 80d |  |
| 15 | Internal Channels / Pipe Galleries | 2027-10-02 → 2027-09-21 (-11d) | 2027-11-23 → 2027-11-11 (-12d) |  |  |
| 16 | Waterproofing / Protective Coating | 2027-11-24 → 2027-11-12 (-12d) | 2027-12-28 → 2027-12-16 (-12d) |  |  |
| 17 | Hydrostatic / Structural Water Test | 2027-12-29 → 2027-12-17 (-12d) | 2028-01-13 → 2028-01-01 (-12d) |  |  |
| 26 | Administration & Laboratory Building |  | 2027-04-09 → 2027-03-23 (-17d) | 135d → 120d | 494d → 499d |
| 27 | Building MEP / Architectural Finishes | 2027-04-10 → 2027-03-24 (-17d) | 2027-06-30 → 2027-06-12 (-18d) |  | 494d → 499d |
| 28 | Process Piping Installation | 2028-01-14 → 2028-01-03 (-11d) | 2028-05-09 → 2028-04-27 (-12d) |  |  |
| 31 | Filter Media / Underdrain Equipment | 2028-01-14 → 2028-01-03 (-11d) | 2028-03-11 → 2028-02-29 (-11d) |  |  |
| 32 | Electrical Installation / MCC / Cabling | 2027-08-11 → 2027-08-23 (+12d) | 2027-12-04 → 2027-12-16 (+12d) |  | 134d → 114d |
| 33 | Instrumentation & SCADA Installation | 2028-05-10 → 2028-04-28 (-12d) | 2028-08-22 → 2028-08-10 (-12d) |  |  |
| 41 | Receiving Equipment / Energization | 2027-08-11 → 2027-08-23 (+12d) | 2027-09-14 → 2027-09-25 (+11d) |  | 294d → 274d |
| 42 | Mechanical Pre-Commissioning | 2028-05-10 → 2028-04-28 (-12d) | 2028-06-07 → 2028-05-26 (-12d) |  |  |
| 43 | Electrical / I&C Pre-Commissioning | 2028-08-23 → 2028-08-11 (-12d) | 2028-09-20 → 2028-09-08 (-12d) |  |  |
| 44 | Dry Commissioning | 2028-09-21 → 2028-09-09 (-12d) | 2028-10-13 → 2028-10-02 (-11d) |  |  |
| 45 | Wet Commissioning / Process Start-Up | 2028-10-14 → 2028-10-03 (-11d) | 2028-11-17 → 2028-11-06 (-11d) |  |  |
| 46 | Performance / Water Quality Testing | 2028-11-18 → 2028-11-07 (-11d) | 2028-12-22 → 2028-12-11 (-11d) |  |  |
| 47 | Punch List / Rectification | 2028-12-23 → 2028-12-12 (-11d) | 2029-01-26 → 2029-01-15 (-11d) |  |  |
| 48 | Training / O&M Documents | 2028-10-14 → 2028-10-03 (-11d) | 2028-11-06 → 2028-10-25 (-12d) |  |  |
| 49 | Taking Over / Completion Milestone | 2029-01-26 → 2029-01-15 (-11d) | 2029-01-26 → 2029-01-15 (-11d) |  |  |

## Version 8 (data date 2027-08-31, saved 2026-08-30, file Michael_Futol_Chinaimo_Scenario_B_NonCritical_Delay.mpp)

Note of the change: deliverables: synchronized native Project package with recovery programme

Last finish stays 2029-01-15.

Changed:

| ID | Task | Start | Finish | Duration | Total float |
| --- | --- | --- | --- | --- | --- |
| 8 | Electrical / Receiving Equipment Procurement |  | 2027-08-21 → 2027-08-10 (-11d) | 250d → 240d | 114d → 124d |
| 26 | Administration & Laboratory Building |  | 2027-03-23 → 2027-04-09 (+17d) | 120d → 135d | 499d → 484d |
| 27 | Building MEP / Architectural Finishes | 2027-03-24 → 2027-04-10 (+17d) | 2027-06-12 → 2027-06-30 (+18d) |  | 499d → 484d |
| 32 | Electrical Installation / MCC / Cabling | 2027-08-23 → 2027-08-11 (-12d) | 2027-12-16 → 2027-12-04 (-12d) |  | 114d → 124d |
| 41 | Receiving Equipment / Energization | 2027-08-23 → 2027-08-11 (-12d) | 2027-09-25 → 2027-09-14 (-11d) |  | 274d → 284d |

## Version 9 (data date 2027-08-31, saved 2026-08-30, file Michael_Futol_Chinaimo_Baseline.mpp)

Note of the change: deliverables: synchronized native Project package with recovery programme

Last finish stays 2029-01-15.

Changed:

| ID | Task | Start | Finish | Duration | Total float |
| --- | --- | --- | --- | --- | --- |
| 26 | Administration & Laboratory Building |  | 2027-04-09 → 2027-03-23 (-17d) | 135d → 120d | 484d → 499d |
| 27 | Building MEP / Architectural Finishes | 2027-04-10 → 2027-03-24 (-17d) | 2027-06-30 → 2027-06-12 (-18d) |  | 484d → 499d |

## Version 10 (data date 2027-08-31, saved 2026-08-30, file Michael_Futol_Chinaimo_Recovery_Programme.mpp)

Note of the change: deliverables: synchronized native Project package with recovery programme

Last finish stays 2029-01-15.

Changed:

| ID | Task | Start | Finish | Duration |
| --- | --- | --- | --- | --- |
| 14 | Rapid Sand Filter Structure |  | 2027-09-20 → 2027-10-01 (+11d) | 80d → 90d |
| 15 | Internal Channels / Pipe Galleries | 2027-09-21 → 2027-10-02 (+11d) | 2027-11-11 → 2027-11-17 (+6d) | 45d → 40d |
| 16 | Waterproofing / Protective Coating | 2027-11-12 → 2027-11-18 (+6d) |  | 30d → 25d |

## Version 11 (data date 2027-08-31, saved 2026-08-30, file Michael_Futol_Chinaimo_Scenario_A_Critical_Delay.mpp)

Note of the change: deliverables: synchronized native Project package with recovery programme

Last finish 2029-01-15 → 2029-01-26 (+11d).

Changed:

| ID | Task | Start | Finish | Duration |
| --- | --- | --- | --- | --- |
| 15 | Internal Channels / Pipe Galleries |  | 2027-11-17 → 2027-11-23 (+6d) | 40d → 45d |
| 16 | Waterproofing / Protective Coating | 2027-11-18 → 2027-11-24 (+6d) | 2027-12-16 → 2027-12-28 (+12d) | 25d → 30d |
| 17 | Hydrostatic / Structural Water Test | 2027-12-17 → 2027-12-29 (+12d) | 2028-01-01 → 2028-01-13 (+12d) |  |
| 28 | Process Piping Installation | 2028-01-03 → 2028-01-14 (+11d) | 2028-04-27 → 2028-05-09 (+12d) |  |
| 31 | Filter Media / Underdrain Equipment | 2028-01-03 → 2028-01-14 (+11d) | 2028-02-29 → 2028-03-11 (+11d) |  |
| 33 | Instrumentation & SCADA Installation | 2028-04-28 → 2028-05-10 (+12d) | 2028-08-10 → 2028-08-22 (+12d) |  |
| 42 | Mechanical Pre-Commissioning | 2028-04-28 → 2028-05-10 (+12d) | 2028-05-26 → 2028-06-07 (+12d) |  |
| 43 | Electrical / I&C Pre-Commissioning | 2028-08-11 → 2028-08-23 (+12d) | 2028-09-08 → 2028-09-20 (+12d) |  |
| 44 | Dry Commissioning | 2028-09-09 → 2028-09-21 (+12d) | 2028-10-02 → 2028-10-13 (+11d) |  |
| 45 | Wet Commissioning / Process Start-Up | 2028-10-03 → 2028-10-14 (+11d) | 2028-11-06 → 2028-11-17 (+11d) |  |
| 46 | Performance / Water Quality Testing | 2028-11-07 → 2028-11-18 (+11d) | 2028-12-11 → 2028-12-22 (+11d) |  |
| 47 | Punch List / Rectification | 2028-12-12 → 2028-12-23 (+11d) | 2029-01-15 → 2029-01-26 (+11d) |  |
| 48 | Training / O&M Documents | 2028-10-03 → 2028-10-14 (+11d) | 2028-10-25 → 2028-11-06 (+12d) |  |
| 49 | Taking Over / Completion Milestone | 2029-01-15 → 2029-01-26 (+11d) | 2029-01-15 → 2029-01-26 (+11d) |  |

## Version 12 (data date 2026-05-05, saved 2026-08-31, file Michael_Futol_Chinaimo_Baseline.mpp)

Note of the change: deliverables: publish lean Baseline Actual Recovery MPP set

Last finish 2029-01-26 → 2028-02-15 (-346d).

Changed:

| ID | Task | Start | Finish | Duration | Total float | Other |
| --- | --- | --- | --- | --- | --- | --- |
| 1 | Notice to Proceed | 2026-09-01 → 2025-10-01 (-335d) | 2026-09-01 → 2025-10-01 (-335d) |  |  | baseline start 2026-09-01 → 2025-10-01; baseline finish 2026-09-01 → 2025-10-01 |
| 2 | Mobilization & Temporary Facilities | 2026-09-01 → 2025-10-01 (-335d) | 2026-09-23 → 2025-10-23 (-335d) |  |  | baseline start 2026-09-01 → 2025-10-01; baseline finish 2026-09-23 → 2025-10-23 |
| 3 | Survey / Setting Out | 2026-09-07 → 2025-10-07 (-335d) | 2026-09-23 → 2025-10-23 (-335d) |  |  | baseline start 2026-09-07 → 2025-10-07; baseline finish 2026-09-23 → 2025-10-23 |
| 4 | Review IFC Drawings / Interfaces | 2026-09-01 → 2025-10-01 (-335d) | 2026-10-05 → 2025-11-04 (-335d) |  | 74d → 64d | baseline start 2026-09-01 → 2025-10-01; baseline finish 2026-10-05 → 2025-11-04 |
| 5 | Method Statements & Material Submittals | 2026-09-12 → 2025-10-13 (-334d) | 2026-11-03 → 2025-12-03 (-335d) |  | 74d → 64d | baseline start 2026-09-12 → 2025-10-13; baseline finish 2026-11-03 → 2025-12-03 |
| 6 | Long-Lead M&E Procurement | 2026-11-04 → 2025-12-04 (-335d) | 2027-10-19 → 2026-11-18 (-335d) |  | 74d → 64d | baseline start 2026-11-04 → 2025-12-04; baseline finish 2027-10-19 → 2026-11-18 |
| 7 | SCADA / Instrumentation Procurement | 2026-11-04 → 2025-12-04 (-335d) | 2027-09-02 → 2026-10-02 (-335d) |  | 214d → 204d | baseline start 2026-11-04 → 2025-12-04; baseline finish 2027-09-02 → 2026-10-02 |
| 8 | Electrical / Receiving Equipment Procurement | 2026-11-04 → 2025-12-04 (-335d) | 2027-08-10 → 2026-09-09 (-335d) |  | 134d → 124d | baseline start 2026-11-04 → 2025-12-04; baseline finish 2027-08-10 → 2026-09-09 |
| 9 | Site Clearing / Excavation / Dewatering | 2026-09-24 → 2025-10-24 (-335d) | 2026-11-03 → 2025-12-03 (-335d) |  |  | baseline start 2026-09-24 → 2025-10-24; baseline finish 2026-11-03 → 2025-12-03 |
| 10 | Ground Preparation / Blinding | 2026-11-04 → 2025-12-04 (-335d) | 2026-11-20 → 2025-12-20 (-335d) |  |  | baseline start 2026-11-04 → 2025-12-04; baseline finish 2026-11-20 → 2025-12-20 |
| 11 | WTP Foundations / Base Slabs | 2026-11-21 → 2025-12-22 (-334d) | 2027-01-29 → 2026-02-28 (-335d) |  |  | baseline start 2026-11-21 → 2025-12-22; baseline finish 2027-01-29 → 2026-02-28 |
| 12 | Mixing / Flocculation Basin RC Works | 2027-01-30 → 2026-03-02 (-334d) | 2027-04-21 → 2026-05-21 (-335d) |  |  | baseline start 2027-01-30 → 2026-03-02; baseline finish 2027-04-21 → 2026-05-21 |
| 13 | Sedimentation Basin RC Works | 2027-02-23 → 2026-03-25 (-335d) | 2027-06-18 → 2026-07-18 (-335d) |  |  | baseline start 2027-02-23 → 2026-03-25; baseline finish 2027-06-18 → 2026-07-18 |
| 14 | Rapid Sand Filter Structure | 2027-06-19 → 2026-07-20 (-334d) | 2027-10-01 → 2026-10-20 (-346d) | 90d → 80d |  | baseline start 2027-06-19 → 2026-07-20; baseline finish 2027-09-20 → 2026-10-20 |
| 15 | Internal Channels / Pipe Galleries | 2027-10-02 → 2026-10-21 (-346d) | 2027-11-23 → 2026-12-11 (-347d) |  |  | baseline start 2027-09-21 → 2026-10-21; baseline finish 2027-11-11 → 2026-12-11 |
| 16 | Waterproofing / Protective Coating | 2027-11-24 → 2026-12-12 (-347d) | 2027-12-28 → 2027-01-15 (-347d) |  |  | baseline start 2027-11-12 → 2026-12-12; baseline finish 2027-12-16 → 2027-01-15 |
| 17 | Hydrostatic / Structural Water Test | 2027-12-29 → 2027-01-16 (-347d) | 2028-01-13 → 2027-02-01 (-346d) |  |  | baseline start 2027-12-17 → 2027-01-16; baseline finish 2028-01-01 → 2027-02-01 |
| 18 | 10,000 m³ Reservoir Excavation | 2026-09-24 → 2025-10-24 (-335d) | 2026-11-09 → 2025-12-09 (-335d) |  | 340d → 330d | baseline start 2026-09-24 → 2025-10-24; baseline finish 2026-11-09 → 2025-12-09 |
| 19 | Reservoir Foundation / Base Slab | 2026-11-10 → 2025-12-10 (-335d) | 2027-01-18 → 2026-02-17 (-335d) |  | 340d → 330d | baseline start 2026-11-10 → 2025-12-10; baseline finish 2027-01-18 → 2026-02-17 |
| 20 | Reservoir Walls / Columns | 2027-01-19 → 2026-02-18 (-335d) | 2027-05-14 → 2026-06-13 (-335d) |  | 340d → 330d | baseline start 2027-01-19 → 2026-02-18; baseline finish 2027-05-14 → 2026-06-13 |
| 21 | Reservoir Roof Slab | 2027-05-15 → 2026-06-15 (-334d) | 2027-07-23 → 2026-08-22 (-335d) |  | 340d → 330d | baseline start 2027-05-15 → 2026-06-15; baseline finish 2027-07-23 → 2026-08-22 |
| 22 | Reservoir Waterproofing / Coating | 2027-07-24 → 2026-08-24 (-334d) | 2027-08-27 → 2026-09-26 (-335d) |  | 340d → 330d | baseline start 2027-07-24 → 2026-08-24; baseline finish 2027-08-27 → 2026-09-26 |
| 23 | Reservoir Hydrostatic Test | 2027-08-28 → 2026-09-28 (-334d) | 2027-09-13 → 2026-10-13 (-335d) |  | 340d → 330d | baseline start 2027-08-28 → 2026-09-28; baseline finish 2027-09-13 → 2026-10-13 |
| 24 | Pump Room Civil / Structural Works | 2026-12-15 → 2026-01-14 (-335d) | 2027-03-11 → 2026-04-10 (-335d) |  | 264d → 254d | baseline start 2026-12-15 → 2026-01-14; baseline finish 2027-03-11 → 2026-04-10 |
| 25 | Chemical Building Civil / Architectural | 2026-12-26 → 2026-01-26 (-334d) | 2027-04-09 → 2026-05-09 (-335d) |  | 359d → 349d | baseline start 2026-12-26 → 2026-01-26; baseline finish 2027-04-09 → 2026-05-09 |
| 26 | Administration & Laboratory Building | 2026-11-04 → 2025-12-04 (-335d) | 2027-03-23 → 2026-04-22 (-335d) |  | 509d → 499d | baseline start 2026-11-04 → 2025-12-04; baseline finish 2027-03-23 → 2026-04-22 |
| 27 | Building MEP / Architectural Finishes | 2027-03-24 → 2026-04-23 (-335d) | 2027-06-12 → 2026-07-13 (-334d) |  | 509d → 499d | baseline start 2027-03-24 → 2026-04-23; baseline finish 2027-06-12 → 2026-07-13 |
| 28 | Process Piping Installation | 2028-01-14 → 2027-02-02 (-346d) | 2028-05-09 → 2027-05-28 (-347d) |  |  | baseline start 2028-01-03 → 2027-02-02; baseline finish 2028-04-27 → 2027-05-28 |
| 29 | Pumps & Mechanical Equipment Installation | 2027-10-20 → 2026-11-19 (-335d) | 2028-02-01 → 2027-03-03 (-335d) |  | 174d → 164d | baseline start 2027-10-20 → 2026-11-19; baseline finish 2028-02-01 → 2027-03-03 |
| 30 | Chemical Dosing Equipment Installation | 2027-10-20 → 2026-11-19 (-335d) | 2028-01-08 → 2027-02-08 (-334d) |  | 194d → 184d | baseline start 2027-10-20 → 2026-11-19; baseline finish 2028-01-08 → 2027-02-08 |
| 31 | Filter Media / Underdrain Equipment | 2028-01-14 → 2027-02-02 (-346d) | 2028-03-11 → 2027-03-31 (-346d) |  |  | baseline start 2028-01-03 → 2027-02-02; baseline finish 2028-02-29 → 2027-03-31 |
| 32 | Electrical Installation / MCC / Cabling | 2027-08-11 → 2026-09-10 (-335d) | 2027-12-04 → 2027-01-04 (-334d) |  | 134d → 124d | baseline start 2027-08-11 → 2026-09-10; baseline finish 2027-12-04 → 2027-01-04 |
| 33 | Instrumentation & SCADA Installation | 2028-05-10 → 2027-05-29 (-347d) | 2028-08-22 → 2027-09-10 (-347d) |  |  | baseline start 2028-04-28 → 2027-05-29; baseline finish 2028-08-10 → 2027-09-10 |
| 34 | Salakham Site Preparation / Excavation | 2026-09-24 → 2025-10-24 (-335d) | 2026-11-09 → 2025-12-09 (-335d) |  | 344d → 334d | baseline start 2026-09-24 → 2025-10-24; baseline finish 2026-11-09 → 2025-12-09 |
| 35 | 7,100 m³ Reservoir RC Works | 2026-11-10 → 2025-12-10 (-335d) | 2027-06-07 → 2026-07-07 (-335d) |  | 344d → 334d | baseline start 2026-11-10 → 2025-12-10; baseline finish 2027-06-07 → 2026-07-07 |
| 36 | Salakham Pump Room | 2026-10-29 → 2025-11-28 (-335d) | 2027-02-10 → 2026-03-12 (-335d) |  | 444d → 434d | baseline start 2026-10-29 → 2025-11-28; baseline finish 2027-02-10 → 2026-03-12 |
| 37 | Salakham M&E Installation | 2027-10-20 → 2026-11-19 (-335d) | 2028-01-20 → 2027-02-19 (-335d) |  | 229d → 219d | baseline start 2027-10-20 → 2026-11-19; baseline finish 2028-01-20 → 2027-02-19 |
| 38 | 22-kV Route Survey / Permits | 2026-09-24 → 2025-10-24 (-335d) | 2026-11-14 → 2025-12-15 (-334d) |  | 304d → 294d | baseline start 2026-09-24 → 2025-10-24; baseline finish 2026-11-14 → 2025-12-15 |
| 39 | Pole / Foundation Works | 2026-11-16 → 2025-12-16 (-335d) | 2027-03-11 → 2026-04-10 (-335d) |  | 304d → 294d | baseline start 2026-11-16 → 2025-12-16; baseline finish 2027-03-11 → 2026-04-10 |
| 40 | 22-kV Line Installation | 2027-03-12 → 2026-04-11 (-335d) | 2027-07-29 → 2026-08-28 (-335d) |  | 304d → 294d | baseline start 2027-03-12 → 2026-04-11; baseline finish 2027-07-29 → 2026-08-28 |
| 41 | Receiving Equipment / Energization | 2027-08-11 → 2026-09-10 (-335d) | 2027-09-14 → 2026-10-14 (-335d) |  | 294d → 284d | baseline start 2027-08-11 → 2026-09-10; baseline finish 2027-09-14 → 2026-10-14 |
| 42 | Mechanical Pre-Commissioning | 2028-05-10 → 2027-05-29 (-347d) | 2028-06-07 → 2027-06-26 (-347d) |  |  | baseline start 2028-04-28 → 2027-05-29; baseline finish 2028-05-26 → 2027-06-26 |
| 43 | Electrical / I&C Pre-Commissioning | 2028-08-23 → 2027-09-11 (-347d) | 2028-09-20 → 2027-10-09 (-347d) |  |  | baseline start 2028-08-11 → 2027-09-11; baseline finish 2028-09-08 → 2027-10-09 |
| 44 | Dry Commissioning | 2028-09-21 → 2027-10-11 (-346d) | 2028-10-13 → 2027-11-02 (-346d) |  |  | baseline start 2028-09-09 → 2027-10-11; baseline finish 2028-10-02 → 2027-11-02 |
| 45 | Wet Commissioning / Process Start-Up | 2028-10-14 → 2027-11-03 (-346d) | 2028-11-17 → 2027-12-07 (-346d) |  |  | baseline start 2028-10-03 → 2027-11-03; baseline finish 2028-11-06 → 2027-12-07 |
| 46 | Performance / Water Quality Testing | 2028-11-18 → 2027-12-08 (-346d) | 2028-12-22 → 2028-01-11 (-346d) |  |  | baseline start 2028-11-07 → 2027-12-08; baseline finish 2028-12-11 → 2028-01-11 |
| 47 | Punch List / Rectification | 2028-12-23 → 2028-01-12 (-346d) | 2029-01-26 → 2028-02-15 (-346d) |  |  | baseline start 2028-12-12 → 2028-01-12; baseline finish 2029-01-15 → 2028-02-15 |
| 48 | Training / O&M Documents | 2028-10-14 → 2027-11-03 (-346d) | 2028-11-06 → 2027-11-25 (-347d) |  |  | baseline start 2028-10-03 → 2027-11-03; baseline finish 2028-10-25 → 2027-11-25 |
| 49 | Taking Over / Completion Milestone | 2029-01-26 → 2028-02-15 (-346d) | 2029-01-26 → 2028-02-15 (-346d) |  |  | baseline start 2029-01-15 → 2028-02-15; baseline finish 2029-01-15 → 2028-02-15 |

## Version 13 (data date 2026-05-05, saved 2026-08-31, file Michael_Futol_Chinaimo_Actual_Progress.mpp)

Note of the change: deliverables: publish lean Baseline Actual Recovery MPP set

Last finish 2028-02-15 → 2028-07-31 (+167d).

Changed:

| ID | Task | Start | Finish | Duration |
| --- | --- | --- | --- | --- |
| 13 | Sedimentation Basin RC Works |  | 2026-07-18 → 2027-01-01 (+167d) | 100d → 243d |
| 14 | Rapid Sand Filter Structure | 2026-07-20 → 2027-01-02 (+166d) | 2026-10-20 → 2027-04-05 (+167d) |  |
| 15 | Internal Channels / Pipe Galleries | 2026-10-21 → 2027-04-06 (+167d) | 2026-12-11 → 2027-05-27 (+167d) |  |
| 16 | Waterproofing / Protective Coating | 2026-12-12 → 2027-05-28 (+167d) | 2027-01-15 → 2027-07-01 (+167d) |  |
| 17 | Hydrostatic / Structural Water Test | 2027-01-16 → 2027-07-02 (+167d) | 2027-02-01 → 2027-07-17 (+166d) |  |
| 28 | Process Piping Installation | 2027-02-02 → 2027-07-19 (+167d) | 2027-05-28 → 2027-11-11 (+167d) |  |
| 31 | Filter Media / Underdrain Equipment | 2027-02-02 → 2027-07-19 (+167d) | 2027-03-31 → 2027-09-14 (+167d) |  |
| 33 | Instrumentation & SCADA Installation | 2027-05-29 → 2027-11-12 (+167d) | 2027-09-10 → 2028-02-24 (+167d) |  |
| 42 | Mechanical Pre-Commissioning | 2027-05-29 → 2027-11-12 (+167d) | 2027-06-26 → 2027-12-10 (+167d) |  |
| 43 | Electrical / I&C Pre-Commissioning | 2027-09-11 → 2028-02-25 (+167d) | 2027-10-09 → 2028-03-24 (+167d) |  |
| 44 | Dry Commissioning | 2027-10-11 → 2028-03-25 (+166d) | 2027-11-02 → 2028-04-17 (+167d) |  |
| 45 | Wet Commissioning / Process Start-Up | 2027-11-03 → 2028-04-18 (+167d) | 2027-12-07 → 2028-05-22 (+167d) |  |
| 46 | Performance / Water Quality Testing | 2027-12-08 → 2028-05-23 (+167d) | 2028-01-11 → 2028-06-26 (+167d) |  |
| 47 | Punch List / Rectification | 2028-01-12 → 2028-06-27 (+167d) | 2028-02-15 → 2028-07-31 (+167d) |  |
| 48 | Training / O&M Documents | 2027-11-03 → 2028-04-18 (+167d) | 2027-11-25 → 2028-05-10 (+167d) |  |
| 49 | Taking Over / Completion Milestone | 2028-02-15 → 2028-07-31 (+167d) | 2028-02-15 → 2028-07-31 (+167d) |  |

## Version 14 (data date 2026-05-05, saved 2026-08-31, file Michael_Futol_Chinaimo_Recovery.mpp)

Note of the change: deliverables: publish lean Baseline Actual Recovery MPP set

Last finish 2028-07-31 → 2028-05-22 (-70d).

Changed:

| ID | Task | Start | Finish | Duration | Total float |
| --- | --- | --- | --- | --- | --- |
| 13 | Sedimentation Basin RC Works |  | 2027-01-01 → 2026-12-09 (-23d) | 243d → 223d |  |
| 14 | Rapid Sand Filter Structure | 2027-01-02 → 2026-12-10 (-23d) | 2027-04-05 → 2027-02-23 (-41d) | 80d → 65d |  |
| 15 | Internal Channels / Pipe Galleries | 2027-04-06 → 2027-02-24 (-41d) | 2027-05-27 → 2027-04-05 (-52d) | 45d → 35d |  |
| 16 | Waterproofing / Protective Coating | 2027-05-28 → 2027-04-06 (-52d) | 2027-07-01 → 2027-05-10 (-52d) |  |  |
| 17 | Hydrostatic / Structural Water Test | 2027-07-02 → 2027-05-11 (-52d) | 2027-07-17 → 2027-05-26 (-52d) |  |  |
| 28 | Process Piping Installation | 2027-07-19 → 2027-05-27 (-53d) | 2027-11-11 → 2027-09-08 (-64d) | 100d → 90d |  |
| 31 | Filter Media / Underdrain Equipment | 2027-07-19 → 2027-05-27 (-53d) | 2027-09-14 → 2027-07-23 (-53d) |  | 140d → 130d |
| 33 | Instrumentation & SCADA Installation | 2027-11-12 → 2027-09-09 (-64d) | 2028-02-24 → 2027-12-22 (-64d) |  |  |
| 42 | Mechanical Pre-Commissioning | 2027-11-12 → 2027-09-09 (-64d) | 2027-12-10 → 2027-10-07 (-64d) |  |  |
| 43 | Electrical / I&C Pre-Commissioning | 2028-02-25 → 2027-12-23 (-64d) | 2028-03-24 → 2028-01-20 (-64d) |  |  |
| 44 | Dry Commissioning | 2028-03-25 → 2028-01-21 (-64d) | 2028-04-17 → 2028-02-12 (-65d) |  |  |
| 45 | Wet Commissioning / Process Start-Up | 2028-04-18 → 2028-02-14 (-64d) | 2028-05-22 → 2028-03-18 (-65d) |  |  |
| 46 | Performance / Water Quality Testing | 2028-05-23 → 2028-03-20 (-64d) | 2028-06-26 → 2028-04-22 (-65d) |  |  |
| 47 | Punch List / Rectification | 2028-06-27 → 2028-04-24 (-64d) | 2028-07-31 → 2028-05-22 (-70d) | 30d → 25d |  |
| 48 | Training / O&M Documents | 2028-04-18 → 2028-02-14 (-64d) | 2028-05-10 → 2028-03-07 (-64d) |  | 70d → 65d |
| 49 | Taking Over / Completion Milestone | 2028-07-31 → 2028-05-22 (-70d) | 2028-07-31 → 2028-05-22 (-70d) |  |  |

## Version 15 (data date 2026-08-31, saved 2026-08-31, file Michael_Futol_Chinaimo_Recovery.mpp)

Note of the change: deliverables: publish native CPM MPPs A2 printouts and final dates

Last finish 2028-05-22 → 2028-04-14 (-38d). Complete tasks 0 → 9.

Changed:

| ID | Task | Start | Finish | Duration | Complete | Total float | Other |
| --- | --- | --- | --- | --- | --- | --- | --- |
| 1 | Notice to Proceed | 2025-10-01 A | 2025-10-01 A |  | 0% → 100% | 0d → none |  |
| 2 | Mobilization & Temporary Facilities | 2025-10-01 A | 2025-10-23 A |  | 0% → 100% | 0d → none |  |
| 3 | Survey / Setting Out | 2025-10-07 A | 2025-10-23 A |  | 0% → 100% | 0d → none |  |
| 4 | Review IFC Drawings / Interfaces | 2025-10-01 A | 2025-11-04 A |  | 0% → 100% | 162d → none |  |
| 5 | Method Statements & Material Submittals | 2025-10-13 A | 2025-12-03 → 2026-09-04 (+275d) |  | 0% → 90% | 162d → 0d |  |
| 6 | Long-Lead M&E Procurement | 2025-12-04 A | 2026-11-18 → 2027-03-16 (+118d) |  | 0% → 45% | 162d → 29.5d |  |
| 7 | SCADA / Instrumentation Procurement | 2025-12-04 A | 2026-10-02 → 2027-03-05 (+154d) |  | 0% → 40% | 292d → 128.5d |  |
| 8 | Electrical / Receiving Equipment Procurement | 2025-12-04 A | 2026-09-09 → 2027-01-08 (+121d) |  | 0% → 55% | 212d → 76.5d |  |
| 9 | Site Clearing / Excavation / Dewatering | 2025-10-24 A | 2025-12-03 A |  | 0% → 100% | 0d → none |  |
| 10 | Ground Preparation / Blinding | 2025-12-04 A | 2025-12-20 A |  | 0% → 100% | 0d → none |  |
| 11 | WTP Foundations / Base Slabs | 2025-12-22 A | 2026-02-28 → 2026-09-16 (+200d) |  | 0% → 75% |  |  |
| 12 | Mixing / Flocculation Basin RC Works | 2026-03-02 A | 2026-05-21 → 2026-10-31 (+163d) |  | 0% → 45% | 0d → 455.5d |  |
| 13 | Sedimentation Basin RC Works | 2026-03-25 A | 2026-12-09 → 2026-11-02 (-37d) | 223d → 80d | 0% → 31% |  |  |
| 14 | Rapid Sand Filter Structure | 2026-12-10 → 2026-11-03 (-37d) | 2027-02-23 → 2027-01-16 (-38d) |  |  |  | constraint none → start no earlier than 2026-08-31 |
| 15 | Internal Channels / Pipe Galleries | 2027-02-24 → 2027-01-18 (-37d) | 2027-04-05 → 2027-02-26 (-38d) |  |  |  |  |
| 16 | Waterproofing / Protective Coating | 2027-04-06 → 2027-02-27 (-38d) | 2027-05-10 → 2027-04-02 (-38d) |  |  |  |  |
| 17 | Hydrostatic / Structural Water Test | 2027-05-11 → 2027-04-03 (-38d) | 2027-05-26 → 2027-04-19 (-37d) |  |  |  |  |
| 18 | 10,000 mÂ³ Reservoir Excavation | 2025-10-24 A | 2025-12-09 A |  | 0% → 100% | 418d → none | was named 10,000 m³ Reservoir Excavation |
| 19 | Reservoir Foundation / Base Slab | 2025-12-10 A | 2026-02-17 → 2026-09-12 (+207d) |  | 0% → 80% | 418d → 0d |  |
| 20 | Reservoir Walls / Columns | 2026-02-18 A | 2026-06-13 → 2026-11-16 (+156d) |  | 0% → 45% | 418d → 0d |  |
| 21 | Reservoir Roof Slab | 2026-06-15 A | 2026-08-22 → 2027-01-18 (+149d) |  | 0% → 10% | 418d → 259d |  |
| 22 | Reservoir Waterproofing / Coating | 2026-08-24 → 2027-01-19 (+148d) | 2026-09-26 → 2027-02-22 (+149d) |  |  | 418d → 259d | constraint none → start no earlier than 2026-08-31 |
| 23 | Reservoir Hydrostatic Test | 2026-09-28 → 2027-02-23 (+148d) | 2026-10-13 → 2027-03-10 (+148d) |  |  | 418d → 259d |  |
| 24 | Pump Room Civil / Structural Works | 2026-01-14 A | 2026-04-10 → 2026-10-30 (+203d) |  | 0% → 30% | 342d → 136.5d |  |
| 25 | Chemical Building Civil / Architectural | 2026-01-26 A | 2026-05-09 → 2026-11-17 (+192d) |  | 0% → 25% | 437d → 241.5d |  |
| 26 | Administration & Laboratory Building | 2025-12-04 A | 2026-04-22 → 2026-12-17 (+239d) |  | 0% → 22% | 582d → 0d |  |
| 27 | Building MEP / Architectural Finishes | 2026-04-23 A | 2026-07-13 → 2027-03-05 (+235d) |  | 0% → 5% | 582d → 348.9d |  |
| 28 | Process Piping Installation | 2027-05-27 → 2027-04-20 (-37d) | 2027-09-08 → 2027-08-02 (-37d) |  |  |  |  |
| 29 | Pumps & Mechanical Equipment Installation | 2026-11-19 → 2027-03-16 (+117d) | 2027-03-03 → 2027-06-29 (+118d) |  |  | 252d → 119.5d |  |
| 30 | Chemical Dosing Equipment Installation | 2026-11-19 → 2027-03-16 (+117d) | 2027-02-08 → 2027-06-05 (+117d) |  |  | 272d → 139.5d |  |
| 31 | Filter Media / Underdrain Equipment | 2027-05-27 → 2027-04-20 (-37d) | 2027-07-23 → 2027-06-16 (-37d) |  |  |  |  |
| 32 | Electrical Installation / MCC / Cabling | 2026-09-10 → 2027-01-08 (+120d) | 2027-01-04 → 2027-05-05 (+121d) |  |  | 212d → 76.5d |  |
| 33 | Instrumentation & SCADA Installation | 2027-09-09 → 2027-08-03 (-37d) | 2027-12-22 → 2027-11-15 (-37d) |  |  |  |  |
| 34 | Salakham Site Preparation / Excavation | 2025-10-24 A | 2025-12-09 A |  | 0% → 100% | 422d → none |  |
| 35 | 7,100 mÂ³ Reservoir RC Works | 2025-12-10 A | 2026-07-07 → 2027-02-03 (+211d) |  | 0% → 25% | 422d → 209d | was named 7,100 m³ Reservoir RC Works |
| 36 | Salakham Pump Room | 2025-11-28 A | 2026-03-12 → 2026-10-31 (+233d) |  | 0% → 40% | 522d → 290d |  |
| 37 | Salakham M&E Installation | 2026-11-19 → 2027-03-16 (+117d) | 2027-02-19 → 2027-06-17 (+118d) |  |  | 307d → 174.5d |  |
| 38 | 22-kV Route Survey / Permits | 2025-10-24 A | 2025-12-15 A |  | 0% → 100% | 382d → none |  |
| 39 | Pole / Foundation Works | 2025-12-16 A | 2026-04-10 → 2026-11-07 (+211d) |  | 0% → 40% | 382d → 0d |  |
| 40 | 22-kV Line Installation | 2026-04-11 A | 2026-08-28 → 2027-03-06 (+190d) |  | 0% → 15% | 382d → 187d |  |
| 41 | Receiving Equipment / Energization | 2026-09-10 → 2027-03-08 (+179d) | 2026-10-14 → 2027-04-10 (+178d) |  |  | 372d → 187d |  |
| 42 | Mechanical Pre-Commissioning | 2027-09-09 → 2027-08-03 (-37d) | 2027-10-07 → 2027-08-31 (-37d) |  |  |  |  |
| 43 | Electrical / I&C Pre-Commissioning | 2027-12-23 → 2027-11-16 (-37d) | 2028-01-20 → 2027-12-14 (-37d) |  |  |  |  |
| 44 | Dry Commissioning | 2028-01-21 → 2027-12-15 (-37d) | 2028-02-12 → 2028-01-06 (-37d) |  |  |  |  |
| 45 | Wet Commissioning / Process Start-Up | 2028-02-14 → 2028-01-07 (-38d) | 2028-03-18 → 2028-02-10 (-37d) |  |  |  |  |
| 46 | Performance / Water Quality Testing | 2028-03-20 → 2028-02-11 (-38d) | 2028-04-22 → 2028-03-16 (-37d) |  |  |  |  |
| 47 | Punch List / Rectification | 2028-04-24 → 2028-03-17 (-38d) | 2028-05-22 → 2028-04-14 (-38d) |  |  |  |  |
| 48 | Training / O&M Documents | 2028-02-14 → 2028-01-07 (-38d) | 2028-03-07 → 2028-01-29 (-38d) |  |  |  |  |
| 49 | Taking Over / Completion Milestone | 2028-05-22 → 2028-04-14 (-38d) | 2028-05-22 → 2028-04-14 (-38d) |  |  |  |  |

## Version 16 (saved 2026-08-31, file Michael_Futol_Chinaimo_Baseline.mpp)

Note of the change: deliverables: publish native CPM MPPs A2 printouts and final dates

Last finish 2028-04-14 → 2028-02-15 (-59d). Complete tasks 9 → 0.

Changed:

| ID | Task | Start | Finish | Duration | Complete | Total float | Other |
| --- | --- | --- | --- | --- | --- | --- | --- |
| 1 | Notice to Proceed | 2025-10-01 A → 2025-10-01 | 2025-10-01 A → 2025-10-01 |  | 100% → 0% | none → 0d |  |
| 2 | Mobilization & Temporary Facilities | 2025-10-01 A → 2025-10-01 | 2025-10-23 A → 2025-10-23 |  | 100% → 0% | none → 0d |  |
| 3 | Survey / Setting Out | 2025-10-07 A → 2025-10-07 | 2025-10-23 A → 2025-10-23 |  | 100% → 0% | none → 0d |  |
| 4 | Review IFC Drawings / Interfaces | 2025-10-01 A → 2025-10-01 | 2025-11-04 A → 2025-11-04 |  | 100% → 0% | none → 64d |  |
| 5 | Method Statements & Material Submittals | 2025-10-13 A → 2025-10-13 | 2026-09-04 → 2025-12-03 (-275d) |  | 90% → 0% | 0d → 64d |  |
| 6 | Long-Lead M&E Procurement | 2025-12-04 A → 2025-12-04 | 2027-03-16 → 2026-11-18 (-118d) |  | 45% → 0% | 29.5d → 64d |  |
| 7 | SCADA / Instrumentation Procurement | 2025-12-04 A → 2025-12-04 | 2027-03-05 → 2026-10-02 (-154d) |  | 40% → 0% | 128.5d → 204d |  |
| 8 | Electrical / Receiving Equipment Procurement | 2025-12-04 A → 2025-12-04 | 2027-01-08 → 2026-09-09 (-121d) |  | 55% → 0% | 76.5d → 124d |  |
| 9 | Site Clearing / Excavation / Dewatering | 2025-10-24 A → 2025-10-24 | 2025-12-03 A → 2025-12-03 |  | 100% → 0% | none → 0d |  |
| 10 | Ground Preparation / Blinding | 2025-12-04 A → 2025-12-04 | 2025-12-20 A → 2025-12-20 |  | 100% → 0% | none → 0d |  |
| 11 | WTP Foundations / Base Slabs | 2025-12-22 A → 2025-12-22 | 2026-09-16 → 2026-02-28 (-200d) |  | 75% → 0% |  |  |
| 12 | Mixing / Flocculation Basin RC Works | 2026-03-02 A → 2026-03-02 | 2026-10-31 → 2026-05-21 (-163d) |  | 45% → 0% | 455.5d → 0d |  |
| 13 | Sedimentation Basin RC Works | 2026-03-25 A → 2026-03-25 | 2026-11-02 → 2026-07-18 (-107d) | 80d → 100d | 31% → 0% |  |  |
| 14 | Rapid Sand Filter Structure | 2026-11-03 → 2026-07-20 (-106d) | 2027-01-16 → 2026-10-20 (-88d) | 65d → 80d |  |  | constraint start no earlier than 2026-08-31 → none |
| 15 | Internal Channels / Pipe Galleries | 2027-01-18 → 2026-10-21 (-89d) | 2027-02-26 → 2026-12-11 (-77d) | 35d → 45d |  |  |  |
| 16 | Waterproofing / Protective Coating | 2027-02-27 → 2026-12-12 (-77d) | 2027-04-02 → 2027-01-15 (-77d) |  |  |  |  |
| 17 | Hydrostatic / Structural Water Test | 2027-04-03 → 2027-01-16 (-77d) | 2027-04-19 → 2027-02-01 (-77d) |  |  |  |  |
| 18 | 10,000 mÂ³ Reservoir Excavation | 2025-10-24 A → 2025-10-24 | 2025-12-09 A → 2025-12-09 |  | 100% → 0% | none → 330d |  |
| 19 | Reservoir Foundation / Base Slab | 2025-12-10 A → 2025-12-10 | 2026-09-12 → 2026-02-17 (-207d) |  | 80% → 0% | 0d → 330d |  |
| 20 | Reservoir Walls / Columns | 2026-02-18 A → 2026-02-18 | 2026-11-16 → 2026-06-13 (-156d) |  | 45% → 0% | 0d → 330d |  |
| 21 | Reservoir Roof Slab | 2026-06-15 A → 2026-06-15 | 2027-01-18 → 2026-08-22 (-149d) |  | 10% → 0% | 259d → 330d |  |
| 22 | Reservoir Waterproofing / Coating | 2027-01-19 → 2026-08-24 (-148d) | 2027-02-22 → 2026-09-26 (-149d) |  |  | 259d → 330d | constraint start no earlier than 2026-08-31 → none |
| 23 | Reservoir Hydrostatic Test | 2027-02-23 → 2026-09-28 (-148d) | 2027-03-10 → 2026-10-13 (-148d) |  |  | 259d → 330d |  |
| 24 | Pump Room Civil / Structural Works | 2026-01-14 A → 2026-01-14 | 2026-10-30 → 2026-04-10 (-203d) |  | 30% → 0% | 136.5d → 254d |  |
| 25 | Chemical Building Civil / Architectural | 2026-01-26 A → 2026-01-26 | 2026-11-17 → 2026-05-09 (-192d) |  | 25% → 0% | 241.5d → 349d |  |
| 26 | Administration & Laboratory Building | 2025-12-04 A → 2025-12-04 | 2026-12-17 → 2026-04-22 (-239d) |  | 22% → 0% | 0d → 499d |  |
| 27 | Building MEP / Architectural Finishes | 2026-04-23 A → 2026-04-23 | 2027-03-05 → 2026-07-13 (-235d) |  | 5% → 0% | 348.9d → 499d |  |
| 28 | Process Piping Installation | 2027-04-20 → 2027-02-02 (-77d) | 2027-08-02 → 2027-05-28 (-66d) | 90d → 100d |  |  |  |
| 29 | Pumps & Mechanical Equipment Installation | 2027-03-16 → 2026-11-19 (-117d) | 2027-06-29 → 2027-03-03 (-118d) |  |  | 119.5d → 164d |  |
| 30 | Chemical Dosing Equipment Installation | 2027-03-16 → 2026-11-19 (-117d) | 2027-06-05 → 2027-02-08 (-117d) |  |  | 139.5d → 184d |  |
| 31 | Filter Media / Underdrain Equipment | 2027-04-20 → 2027-02-02 (-77d) | 2027-06-16 → 2027-03-31 (-77d) |  |  | 130d → 140d |  |
| 32 | Electrical Installation / MCC / Cabling | 2027-01-08 → 2026-09-10 (-120d) | 2027-05-05 → 2027-01-04 (-121d) |  |  | 76.5d → 124d |  |
| 33 | Instrumentation & SCADA Installation | 2027-08-03 → 2027-05-29 (-66d) | 2027-11-15 → 2027-09-10 (-66d) |  |  |  |  |
| 34 | Salakham Site Preparation / Excavation | 2025-10-24 A → 2025-10-24 | 2025-12-09 A → 2025-12-09 |  | 100% → 0% | none → 334d |  |
| 35 | 7,100 mÂ³ Reservoir RC Works | 2025-12-10 A → 2025-12-10 | 2027-02-03 → 2026-07-07 (-211d) |  | 25% → 0% | 209d → 334d |  |
| 36 | Salakham Pump Room | 2025-11-28 A → 2025-11-28 | 2026-10-31 → 2026-03-12 (-233d) |  | 40% → 0% | 290d → 434d |  |
| 37 | Salakham M&E Installation | 2027-03-16 → 2026-11-19 (-117d) | 2027-06-17 → 2027-02-19 (-118d) |  |  | 174.5d → 219d |  |
| 38 | 22-kV Route Survey / Permits | 2025-10-24 A → 2025-10-24 | 2025-12-15 A → 2025-12-15 |  | 100% → 0% | none → 294d |  |
| 39 | Pole / Foundation Works | 2025-12-16 A → 2025-12-16 | 2026-11-07 → 2026-04-10 (-211d) |  | 40% → 0% | 0d → 294d |  |
| 40 | 22-kV Line Installation | 2026-04-11 A → 2026-04-11 | 2027-03-06 → 2026-08-28 (-190d) |  | 15% → 0% | 187d → 294d |  |
| 41 | Receiving Equipment / Energization | 2027-03-08 → 2026-09-10 (-179d) | 2027-04-10 → 2026-10-14 (-178d) |  |  | 187d → 284d |  |
| 42 | Mechanical Pre-Commissioning | 2027-08-03 → 2027-05-29 (-66d) | 2027-08-31 → 2027-06-26 (-66d) |  |  |  |  |
| 43 | Electrical / I&C Pre-Commissioning | 2027-11-16 → 2027-09-11 (-66d) | 2027-12-14 → 2027-10-09 (-66d) |  |  |  |  |
| 44 | Dry Commissioning | 2027-12-15 → 2027-10-11 (-65d) | 2028-01-06 → 2027-11-02 (-65d) |  |  |  |  |
| 45 | Wet Commissioning / Process Start-Up | 2028-01-07 → 2027-11-03 (-65d) | 2028-02-10 → 2027-12-07 (-65d) |  |  |  |  |
| 46 | Performance / Water Quality Testing | 2028-02-11 → 2027-12-08 (-65d) | 2028-03-16 → 2028-01-11 (-65d) |  |  |  |  |
| 47 | Punch List / Rectification | 2028-03-17 → 2028-01-12 (-65d) | 2028-04-14 → 2028-02-15 (-59d) | 25d → 30d |  |  |  |
| 48 | Training / O&M Documents | 2028-01-07 → 2027-11-03 (-65d) | 2028-01-29 → 2027-11-25 (-65d) |  |  | 65d → 70d |  |
| 49 | Taking Over / Completion Milestone | 2028-04-14 → 2028-02-15 (-59d) | 2028-04-14 → 2028-02-15 (-59d) |  |  |  |  |

## Version 17 (data date 2026-08-31, saved 2026-08-31, file Michael_Futol_Chinaimo_Actual_Progress.mpp)

Note of the change: deliverables: publish native CPM MPPs A2 printouts and final dates

Last finish 2028-02-15 → 2028-06-23 (+129d). Complete tasks 0 → 9.

Changed:

| ID | Task | Start | Finish | Complete | Total float | Other |
| --- | --- | --- | --- | --- | --- | --- |
| 1 | Notice to Proceed | 2025-10-01 A | 2025-10-01 A | 0% → 100% | 0d → none |  |
| 2 | Mobilization & Temporary Facilities | 2025-10-01 A | 2025-10-23 A | 0% → 100% | 0d → none |  |
| 3 | Survey / Setting Out | 2025-10-07 A | 2025-10-23 A | 0% → 100% | 0d → none |  |
| 4 | Review IFC Drawings / Interfaces | 2025-10-01 A | 2025-11-04 A | 0% → 100% | 64d → none |  |
| 5 | Method Statements & Material Submittals | 2025-10-13 A | 2025-12-03 → 2026-09-04 (+275d) | 0% → 90% | 64d → 0d |  |
| 6 | Long-Lead M&E Procurement | 2025-12-04 A | 2026-11-18 → 2027-03-16 (+118d) | 0% → 45% | 64d → 74.5d |  |
| 7 | SCADA / Instrumentation Procurement | 2025-12-04 A | 2026-10-02 → 2027-03-05 (+154d) | 0% → 40% | 204d → 183.5d |  |
| 8 | Electrical / Receiving Equipment Procurement | 2025-12-04 A | 2026-09-09 → 2027-01-08 (+121d) | 0% → 55% | 124d → 131.5d |  |
| 9 | Site Clearing / Excavation / Dewatering | 2025-10-24 A | 2025-12-03 A | 0% → 100% | 0d → none |  |
| 10 | Ground Preparation / Blinding | 2025-12-04 A | 2025-12-20 A | 0% → 100% | 0d → none |  |
| 11 | WTP Foundations / Base Slabs | 2025-12-22 A | 2026-02-28 → 2026-09-16 (+200d) | 0% → 75% |  |  |
| 12 | Mixing / Flocculation Basin RC Works | 2026-03-02 A | 2026-05-21 → 2026-10-31 (+163d) | 0% → 45% | 0d → 515.5d |  |
| 13 | Sedimentation Basin RC Works | 2026-03-25 A | 2026-07-18 → 2026-11-25 (+130d) | 0% → 25% |  |  |
| 14 | Rapid Sand Filter Structure | 2026-07-20 → 2026-11-26 (+129d) | 2026-10-20 → 2027-02-26 (+129d) |  |  | constraint none → start no earlier than 2026-08-31 |
| 15 | Internal Channels / Pipe Galleries | 2026-10-21 → 2027-02-27 (+129d) | 2026-12-11 → 2027-04-20 (+130d) |  |  |  |
| 16 | Waterproofing / Protective Coating | 2026-12-12 → 2027-04-21 (+130d) | 2027-01-15 → 2027-05-25 (+130d) |  |  |  |
| 17 | Hydrostatic / Structural Water Test | 2027-01-16 → 2027-05-26 (+130d) | 2027-02-01 → 2027-06-10 (+129d) |  |  |  |
| 18 | 10,000 mÂ³ Reservoir Excavation | 2025-10-24 A | 2025-12-09 A | 0% → 100% | 330d → none |  |
| 19 | Reservoir Foundation / Base Slab | 2025-12-10 A | 2026-02-17 → 2026-09-12 (+207d) | 0% → 80% | 330d → 0d |  |
| 20 | Reservoir Walls / Columns | 2026-02-18 A | 2026-06-13 → 2026-11-16 (+156d) | 0% → 45% | 330d → 0d |  |
| 21 | Reservoir Roof Slab | 2026-06-15 A | 2026-08-22 → 2027-01-18 (+149d) | 0% → 10% | 330d → 314d |  |
| 22 | Reservoir Waterproofing / Coating | 2026-08-24 → 2027-01-19 (+148d) | 2026-09-26 → 2027-02-22 (+149d) |  | 330d → 314d | constraint none → start no earlier than 2026-08-31 |
| 23 | Reservoir Hydrostatic Test | 2026-09-28 → 2027-02-23 (+148d) | 2026-10-13 → 2027-03-10 (+148d) |  | 330d → 314d |  |
| 24 | Pump Room Civil / Structural Works | 2026-01-14 A | 2026-04-10 → 2026-10-30 (+203d) | 0% → 30% | 254d → 191.5d |  |
| 25 | Chemical Building Civil / Architectural | 2026-01-26 A | 2026-05-09 → 2026-11-17 (+192d) | 0% → 25% | 349d → 296.5d |  |
| 26 | Administration & Laboratory Building | 2025-12-04 A | 2026-04-22 → 2026-12-17 (+239d) | 0% → 22% | 499d → 0d |  |
| 27 | Building MEP / Architectural Finishes | 2026-04-23 A | 2026-07-13 → 2027-03-05 (+235d) | 0% → 5% | 499d → 408.9d |  |
| 28 | Process Piping Installation | 2027-02-02 → 2027-06-11 (+129d) | 2027-05-28 → 2027-10-05 (+130d) |  |  |  |
| 29 | Pumps & Mechanical Equipment Installation | 2026-11-19 → 2027-03-16 (+117d) | 2027-03-03 → 2027-06-29 (+118d) |  | 164d → 174.5d |  |
| 30 | Chemical Dosing Equipment Installation | 2026-11-19 → 2027-03-16 (+117d) | 2027-02-08 → 2027-06-05 (+117d) |  | 184d → 194.5d |  |
| 31 | Filter Media / Underdrain Equipment | 2027-02-02 → 2027-06-11 (+129d) | 2027-03-31 → 2027-08-07 (+129d) |  |  |  |
| 32 | Electrical Installation / MCC / Cabling | 2026-09-10 → 2027-01-08 (+120d) | 2027-01-04 → 2027-05-05 (+121d) |  | 124d → 131.5d |  |
| 33 | Instrumentation & SCADA Installation | 2027-05-29 → 2027-10-06 (+130d) | 2027-09-10 → 2028-01-18 (+130d) |  |  |  |
| 34 | Salakham Site Preparation / Excavation | 2025-10-24 A | 2025-12-09 A | 0% → 100% | 334d → none |  |
| 35 | 7,100 mÂ³ Reservoir RC Works | 2025-12-10 A | 2026-07-07 → 2027-02-03 (+211d) | 0% → 25% | 334d → 264d |  |
| 36 | Salakham Pump Room | 2025-11-28 A | 2026-03-12 → 2026-10-31 (+233d) | 0% → 40% | 434d → 345d |  |
| 37 | Salakham M&E Installation | 2026-11-19 → 2027-03-16 (+117d) | 2027-02-19 → 2027-06-17 (+118d) |  | 219d → 229.5d |  |
| 38 | 22-kV Route Survey / Permits | 2025-10-24 A | 2025-12-15 A | 0% → 100% | 294d → none |  |
| 39 | Pole / Foundation Works | 2025-12-16 A | 2026-04-10 → 2026-11-07 (+211d) | 0% → 40% | 294d → 0d |  |
| 40 | 22-kV Line Installation | 2026-04-11 A | 2026-08-28 → 2027-03-06 (+190d) | 0% → 15% | 294d → 242d |  |
| 41 | Receiving Equipment / Energization | 2026-09-10 → 2027-03-08 (+179d) | 2026-10-14 → 2027-04-10 (+178d) |  | 284d → 242d |  |
| 42 | Mechanical Pre-Commissioning | 2027-05-29 → 2027-10-06 (+130d) | 2027-06-26 → 2027-11-03 (+130d) |  |  |  |
| 43 | Electrical / I&C Pre-Commissioning | 2027-09-11 → 2028-01-19 (+130d) | 2027-10-09 → 2028-02-16 (+130d) |  |  |  |
| 44 | Dry Commissioning | 2027-10-11 → 2028-02-17 (+129d) | 2027-11-02 → 2028-03-10 (+129d) |  |  |  |
| 45 | Wet Commissioning / Process Start-Up | 2027-11-03 → 2028-03-11 (+129d) | 2027-12-07 → 2028-04-14 (+129d) |  |  |  |
| 46 | Performance / Water Quality Testing | 2027-12-08 → 2028-04-15 (+129d) | 2028-01-11 → 2028-05-19 (+129d) |  |  |  |
| 47 | Punch List / Rectification | 2028-01-12 → 2028-05-20 (+129d) | 2028-02-15 → 2028-06-23 (+129d) |  |  |  |
| 48 | Training / O&M Documents | 2027-11-03 → 2028-03-11 (+129d) | 2027-11-25 → 2028-04-03 (+130d) |  |  |  |
| 49 | Taking Over / Completion Milestone | 2028-02-15 → 2028-06-23 (+129d) | 2028-02-15 → 2028-06-23 (+129d) |  |  |  |
